# HighLevelTaskPlan-ISO_Datatype2

Schedule from MS Project, 2010-02-18 to 2010-06-08, A marks actual dates.
Personal

## Calendars

- Standard: Mon-Fri 08:00-12:00, 13:00-17:00; Sat-Sun off.

## Resources

| Resource |
| --- |
| SDK |
| caGrid |
| caAdapter |
| QA |
| 2 |
| 8 |
| 9 |
| 14 |
| 15FS-5 days |
| 6 |
| 20 |
| 16 |
| 21 |
| 24 |
| 29 |
| 31 |
| 32 |
| 37 |
| 38 |
| 39 |
| 40 |
| 10 |
| 42 |
| 45 |
| 46 |
| 47 |
| 44 |
| 49 |
| 25 |
| 54SS-5 days |
| 58 |
| 54 |
| 62 |
| 63 |
| 70 |
| 59 |
| 64 |

## Schedule

| ID | WBS | Task | Type | Duration | Start | Finish | Predecessors | Complete | Remaining | Total slack | Free slack | Constraint | Resources | Work | Actual work |
| --- | --- | --- | --- | --- | --- | --- | --- | --- | --- | --- | --- | --- | --- | --- | --- |
| 1 | 1 | **ISO Datatype support** |  | 79d? | 2010-02-18 A | 2010-06-08 |  | 57% | 33.78d? | 0d |  |  |  | 3216h | 1813.6h |
| 2 | 1.1 | Kickoff |  | 1d | 2010-03-01 | 2010-03-01 |  |  |  | 59d |  | start no earlier than 2010-03-01 |  |  |  |
| 4 | 1.2 | **Implementation** |  | 20d | 2010-03-02 A | 2010-03-29 |  | 75% | 5d | 51d |  |  |  | 480h | 360h |
| 5 | 1.2.1 | ISO 21090 Library |  | 20d | 2010-03-02 A | 2010-03-29 |  | 75% | 5d | 39d |  | start no earlier than 2010-03-02 |  |  |  |
| 6 | 1.2.2 | Analyze COPPA Localized library |  | 5d | 2010-03-02 A | 2010-03-08 A | 2 | 100% |  |  |  | start no earlier than 2010-03-02 | SDK; caGrid | 80h | 80h |
| 7 | 1.2.3 | Analyze COPPA serialization framework |  | 5d | 2010-03-02 A | 2010-03-08 A | 2 | 100% |  |  |  | start no earlier than 2010-03-02 | SDK; caGrid | 80h | 80h |
| 8 | 1.2.4 | Analyze COPPA OR Mapping framework |  | 5d | 2010-03-02 A | 2010-03-08 A | 2 | 100% |  |  |  | start no earlier than 2010-03-02 | SDK; caGrid | 80h | 80h |
| 9 | 1.2.5 | Implement enhancements in datatype library |  | 15d | 2010-03-09 A | 2010-03-29 | 8 | 50% | 7.5d | 39d | 0d | start no earlier than 2010-03-09 | SDK; caGrid | 240h | 120h |
| 10 | 1.2.6 | Baseline library code | milestone | 0d | 2010-03-29 | 2010-03-29 | 9 |  |  | 39d |  | start no earlier than 2010-03-29 |  |  |  |
| 12 | 1.3 | **SDK Enhancements** |  | 48d | 2010-02-18 A | 2010-04-26 |  | 82% | 8.59d | 31d |  |  |  | 1064h | 873.6h |
| 13 | 1.3.1 | Document short term and long term goals for the SDK |  | 10d | 2010-02-18 A | 2010-03-03 A |  | 100% |  |  |  | start no earlier than 2010-02-18 | SDK | 80h | 80h |
| 14 | 1.3.2 | Create design document for tag value specification |  | 10d | 2010-03-09 A | 2010-03-22 A | 8 | 100% |  |  |  | start no earlier than 2010-03-09 | SDK | 80h | 80h |
| 15 | 1.3.3 | Create design document for Hibernate mapping |  | 15d | 2010-03-09 A | 2010-03-29 | 8 | 90% | 1.5d | 39d | 0d | start no earlier than 2010-03-09 | SDK | 120h | 108h |
| 16 | 1.3.4 | Develop JAXB based serialization framework |  | 15d | 2010-03-09 A | 2010-03-29 A | 8 | 100% |  |  |  | start no earlier than 2010-03-09 | SDK | 120h | 120h |
| 17 | 1.3.5 | Create Test UML model |  | 5d | 2010-03-23 A | 2010-03-29 A | 14 | 100% |  |  |  | start no earlier than 2010-03-23 | SDK | 40h | 40h |
| 18 | 1.3.6 | Enhance SDK Java code generator for the ISO data types |  | 5d | 2010-03-23 A | 2010-03-29 A | 15FS-5d | 100% |  |  |  | start no earlier than 2010-03-23 | SDK | 40h | 40h |
| 19 | 1.3.7 | Enhance SDK ORM module for ISO data types |  | 10d | 2010-03-23 A | 2010-04-05 | 15FS-5d | 90% | 1d | 34d |  | start no earlier than 2010-03-23 | SDK | 80h | 72h |
| 20 | 1.3.8 | Enhance SDK service layer to support ISO data types |  | 15d | 2010-03-09 A | 2010-03-29 | 6 | 90% | 1.5d | 16.5d | 0d | start no earlier than 2010-03-09 | SDK | 120h | 108h |
| 21 | 1.3.9 | Integrate ISO 21090 library in JAXB serialization |  | 8d | 2010-03-30 A | 2010-04-08 | 20, 16 | 90% | 0.8d | 30.5d | 0d | start no earlier than 2010-03-30 | SDK | 64h | 57.6h |
| 22 | 1.3.10 | Enhance SDK proxy framework for ISO data types |  | 5d | 2010-04-09 A | 2010-04-15 | 21 | 90% | 0.5d | 26d |  | start no earlier than 2010-04-09 | SDK | 40h | 36h |
| 23 | 1.3.11 | Enhance SDK RESTful query translator for ISO data types |  | 15d | 2010-03-30 | 2010-04-19 | 20 |  |  | 24d |  | start no earlier than 2010-03-30 | SDK | 120h |  |
| 24 | 1.3.12 | Enhance BDA scripts for packaging and deployment |  | 15d | 2010-03-30 A | 2010-04-19 | 6, 20 | 90% | 1.5d | 3d | 0d | start no earlier than 2010-03-30 | SDK | 120h | 108h |
| 25 | 1.3.13 | Unit test and defect fix |  | 5d | 2010-04-20 A | 2010-04-26 | 24 | 60% | 2d | 0d |  | start no earlier than 2010-04-20 | SDK | 40h | 24h |
| 27 | 1.4 | **caAdapter Enhancements** |  | 57d? | 2010-03-02 A | 2010-05-19 |  | 79% | 12.09d? | 14d |  |  |  | 376h | 376h |
| 28 | 1.4.1 | Document the short and long term scope of the caAdapter efforts |  | 5d | 2010-03-02 A | 2010-03-08 A | 2 | 100% |  |  |  | start no earlier than 2010-03-02 | caAdapter | 40h | 40h |
| 29 | 1.4.2 | Enhance caAdapter to load ISO 21090 information |  | 10d | 2010-03-09 A | 2010-03-22 A | 28 | 100% |  |  |  | start no earlier than 2010-03-09 | caAdapter | 80h | 80h |
| 30 | 1.4.3 | Create template model |  | 5d | 2010-03-16 A | 2010-03-22 A | 28 | 100% |  |  |  | start no earlier than 2010-03-16 | caAdapter | 40h | 40h |
| 31 | 1.4.4 | Enhance caAdapter Model Mapping Service |  | 17d | 2010-03-23 A | 2010-04-14 A | 30 | 100% |  |  |  | start no earlier than 2010-03-23 | caAdapter | 136h | 136h |
| 32 | 1.4.5 | Unit test and defect fix |  | 10d | 2010-04-15 A | 2010-04-28 A | 31 | 100% |  |  |  | start no earlier than 2010-04-15 | caAdapter | 80h | 80h |
| 33 | 1.4.6 | caAdapter iteration #2 |  | 5d | 2010-04-29 A | 2010-05-05 A | 32 | 100% |  |  |  |  |  |  |  |
| 34 | 1.4.7 | caAdapter iteration #3 |  | 10d | 2010-05-06 | 2010-05-19 | 33 |  |  | 14d |  |  |  |  |  |
| 35 | 1.4.8 | caAdapter Documentation |  | 10d | 2010-05-06 | 2010-05-19 | 33 |  |  | 14d | 0d |  |  |  |  |
| 36 | 1.4.9 | Deliver baseline caAdapter | milestone | 0d | 2010-05-19 | 2010-05-19 | 35 |  |  | 14d |  | start no earlier than 2010-02-18 |  |  |  |
| 38 | 1.4.10 | caGrid_HighLevel_TaskPlan_ISO_Datatype |  | 42.8d? | 2010-03-02 A | 2010-04-29 |  | 90% | 4.35d? | 28.2d |  |  |  |  |  |

| ID | WBS | Task | Type | Duration | Start | Finish | Predecessors | Complete | Remaining | Total slack | Free slack | Constraint | Resources | Work | Actual work |
| --- | --- | --- | --- | --- | --- | --- | --- | --- | --- | --- | --- | --- | --- | --- | --- |
| 40 | 1.5 | **SDK/caGrid Integration** |  | 5d | 2010-04-27 | 2010-05-03 |  |  |  | 0d |  |  |  | 80h |  |
| 41 | 1.5.1 | Perform SDK and caGrid Integration |  | 5d | 2010-04-27 | 2010-05-03 | 25 |  |  | 0d |  | start no earlier than 2010-04-27 | SDK; caGrid | 80h |  |
| 43 | 1.6 | **QA Testing** |  | 36d | 2010-04-20 A | 2010-06-08 |  | 18% | 29.39d | 0d |  |  |  | 320h | 204h |
| 44 | 1.6.1 | Prepare test plan |  | 10d | 2010-04-20 A | 2010-05-03 | 41SS-5d | 75% | 2.5d | 0d |  | start no earlier than 2010-04-20 | QA; SDK; caGrid | 240h | 180h |
| 45 | 1.6.2 | **Execute test cases iteration #1** |  | 10d | 2010-05-04 A | 2010-05-17 | 44, 41 | 30% | 7d | 11d | 0d |  | QA | 80h | 24h |
| 46 | 1.6.2.1 | SDK #1 |  | 10d | 2010-05-04 A | 2010-05-17 | 44, 41 | 40% | 6d | 0d |  |  |  |  |  |
| 47 | 1.6.2.2 | caAdapter #2 |  | 5d | 2010-05-04 A | 2010-05-10 | 44, 41 | 30% | 3.5d | 16d | 5d |  |  |  |  |
| 48 | 1.6.2.3 | caGRID AS #1 |  | 10d | 2010-05-04 A | 2010-05-17 | 44, 41 | 50% | 5d | 0d |  |  |  |  |  |
| 49 | 1.6.2.4 | caGRID DS #1 |  | 10d | 2010-05-04 | 2010-05-17 | 44, 41 |  |  | 0d |  |  |  |  |  |
| 50 | 1.6.3 | **Exceute test cases iteration #2** |  | 8d | 2010-05-18 | 2010-05-27 | 49 |  |  | 0d |  |  |  |  |  |
| 51 | 1.6.3.1 | SDK #2 |  | 8d | 2010-05-18 | 2010-05-27 | 46 |  |  | 0d |  |  |  |  |  |
| 52 | 1.6.3.2 | caAdapter #3 |  | 5d | 2010-05-18 | 2010-05-24 | 47 |  |  | 11d |  |  |  |  |  |
| 53 | 1.6.3.3 | caGRID AS #2 |  | 8d | 2010-05-18 | 2010-05-27 | 48 |  |  | 0d |  |  |  |  |  |
| 54 | 1.6.3.4 | caGRID DS #2 |  | 8d | 2010-05-18 | 2010-05-27 | 49 |  |  | 0d |  |  |  |  |  |
| 55 | 1.6.4 | **Execute test cases iteration #3** |  | 8d | 2010-05-28 | 2010-06-08 |  |  |  | 0d |  |  |  |  |  |
| 56 | 1.6.4.1 | SDK #3 |  | 8d | 2010-05-28 | 2010-06-08 | 51 |  |  | 0d |  |  |  |  |  |
| 57 | 1.6.4.2 | caGRID AS #3 |  | 8d | 2010-05-28 | 2010-06-08 | 53 |  |  | 0d |  |  |  |  |  |
| 58 | 1.6.4.3 | caGRID DS #3 |  | 8d | 2010-05-28 | 2010-06-08 | 54 |  |  | 0d |  |  |  |  |  |
| 63 | 1.7 | **User Documentation** |  | 10d | 2010-05-04 | 2010-05-17 |  |  |  | 12d |  |  |  | 800h |  |
| 64 | 1.7.1 | Prepare user guide |  | 10d | 2010-05-04 | 2010-05-17 | 41 |  |  | 12d | 0d | start no earlier than 2010-05-04 | SDK; caGrid; caAdapter | 240h |  |
| 65 | 1.7.2 | Prepare installation guide |  | 10d | 2010-05-04 | 2010-05-17 | 41 |  |  | 12d | 0d | start no earlier than 2010-05-04 | SDK; caGrid; caAdapter | 240h |  |
| 66 | 1.7.3 | Deliver installation and user guide | milestone | 0d | 2010-05-17 | 2010-05-17 | 64, 65 |  |  | 12d | 0d | start no earlier than 2010-05-17 |  |  |  |
| 67 | 1.7.4 | Prepare developers guide for service developers with ISO 21090 datatypes |  | 10d | 2010-05-04 | 2010-05-17 | 41 |  |  | 16d |  | start no earlier than 2010-05-04 | SDK; caGrid; caAdapter | 240h |  |
| 68 | 1.7.5 | Develop developer guide documentation for data type extension |  | 10d | 2010-05-04 | 2010-05-17 | 41 |  |  | 16d |  | start no earlier than 2010-05-04 | caGrid | 80h |  |

| ID | WBS | Task | Duration | Start | Finish | Predecessors | Total slack | Free slack | Constraint | Resources | Work |
| --- | --- | --- | --- | --- | --- | --- | --- | --- | --- | --- | --- |
| 70 | 1.8 | **Transition** | 4d | 2010-05-18 | 2010-05-21 |  | 12d |  |  |  | 96h |
| 71 | 1.8.1 | Prepare release notes, zope sites | 2d | 2010-05-18 | 2010-05-19 | 45, 66 | 12d | 0d | start no earlier than 2010-05-18 | SDK; caGrid; caAdapter | 48h |
| 72 | 1.8.2 | Upload artifacts on the public sites | 2d | 2010-05-20 | 2010-05-21 | 71 | 12d |  | start no earlier than 2010-05-20 | SDK; caGrid; caAdapter | 48h |
